# WBS ENZO Y ALEXIS

Schedule from MS Project, 2013-05-20 to 2013-05-20.

## Calendars

- Estándar: Mon-Fri 09:00-13:00, 15:00-19:00; Sat-Sun off.

## Schedule

| ID | WBS | Task | Duration | Start | Finish | Total slack |
| --- | --- | --- | --- | --- | --- | --- |
| 1 | 1 | **Proyecto: S.A.P.O.** | 1d | 2013-05-20 | 2013-05-20 | 0d |
| 2 | 1.1 | **Gestión de Proyecto** | 1d | 2013-05-20 | 2013-05-20 | 0d |
| 3 | 1.1.1 | **Alcance** | 1d | 2013-05-20 | 2013-05-20 | 0d |
| 4 | 1.1.1.1 | **Desarrollo idea de Proyecto** | 1d | 2013-05-20 | 2013-05-20 | 0d |
| 5 | 1.1.1.1.1 | Definir objetivos | 1d | 2013-05-20 | 2013-05-20 | 0d |
| 6 | 1.1.1.1.2 | Definir ámbito | 1d | 2013-05-20 | 2013-05-20 | 0d |
| 7 | 1.1.1.1.3 | Analizar y definir solución | 1d | 2013-05-20 | 2013-05-20 | 0d |
| 8 | 1.1.1.2 | **Definición alcance de proyecto** | 1d | 2013-05-20 | 2013-05-20 | 0d |
| 9 | 1.1.1.2.1 | Elaborar Project Charter | 1d | 2013-05-20 | 2013-05-20 | 0d |
| 10 | 1.1.1.2.2 | Identificar supuestos y restricciones | 1d | 2013-05-20 | 2013-05-20 | 0d |
| 11 | 1.1.1.2.3 | Identificar entregables de trabajo | 1d | 2013-05-20 | 2013-05-20 | 0d |
| 12 | 1.1.1.2.4 | Definir roles participantes | 1d | 2013-05-20 | 2013-05-20 | 0d |
| 13 | 1.1.1.2.5 | Elaborar Scope Statement | 1d | 2013-05-20 | 2013-05-20 | 0d |
| 14 | 1.1.1.3 | **Desglose de trabajo (WBS)** | 1d | 2013-05-20 | 2013-05-20 | 0d |
| 15 | 1.1.1.3.1 | Identificar componentes y estructurar la WBS | 1d | 2013-05-20 | 2013-05-20 | 0d |
| 16 | 1.1.1.3.2 | Elaborar diccionario de la WBS | 1d | 2013-05-20 | 2013-05-20 | 0d |
| 17 | 1.1.1.3.3 | Realizar listado de actividades | 1d | 2013-05-20 | 2013-05-20 | 0d |
| 18 | 1.1.1.4 | **Planificar Iteraciones del proyecto** | 1d | 2013-05-20 | 2013-05-20 | 0d |
| 19 | 1.1.1.4.1 | Armar lista priorizada de requerimientos con el cliente | 1d | 2013-05-20 | 2013-05-20 | 0d |
| 20 | 1.1.1.4.2 | Definir requerimientos a incluir en cada iteración | 1d | 2013-05-20 | 2013-05-20 | 0d |
| 21 | 1.1.1.4.3 | Asignar recursos para cada iteración | 1d | 2013-05-20 | 2013-05-20 | 0d |
| 22 | 1.1.1.4.4 | Documentar planificación de las iteraciones | 1d | 2013-05-20 | 2013-05-20 | 0d |
| 23 | 1.1.2 | **Tiempo** | 1d | 2013-05-20 | 2013-05-20 | 0d |
| 24 | 1.1.2.1 | **Estimación de recursos y duración actividades** | 1d | 2013-05-20 | 2013-05-20 | 0d |
| 25 | 1.1.2.1.1 | Estimar duración actividades | 1d | 2013-05-20 | 2013-05-20 | 0d |
| 26 | 1.1.2.1.2 | Estimar recursos necesarios | 1d | 2013-05-20 | 2013-05-20 | 0d |
| 27 | 1.1.2.1.3 | Análisis de estimaciones | 1d | 2013-05-20 | 2013-05-20 | 0d |

| ID | WBS | Task | Duration | Start | Finish | Total slack |
| --- | --- | --- | --- | --- | --- | --- |
| 28 | 1.1.2.2 | **Desarrollo del Cronograma** | 1d | 2013-05-20 | 2013-05-20 | 0d |
| 29 | 1.1.2.2.1 | Identificar hitos del proyecto | 1d | 2013-05-20 | 2013-05-20 | 0d |
| 30 | 1.1.2.2.2 | Identificar actividades críticas | 1d | 2013-05-20 | 2013-05-20 | 0d |
| 31 | 1.1.2.2.3 | Analizar secuenciamiento de actividades | 1d | 2013-05-20 | 2013-05-20 | 0d |
| 32 | 1.1.2.2.4 | Definir cronograma | 1d | 2013-05-20 | 2013-05-20 | 0d |
| 33 | 1.1.2.3 | **Control del Cronograma** | 1d | 2013-05-20 | 2013-05-20 | 0d |
| 34 | 1.1.2.3.1 | Determinar estado actual | 1d | 2013-05-20 | 2013-05-20 | 0d |
| 35 | 1.1.2.3.2 | Analizar factores que generan cambios | 1d | 2013-05-20 | 2013-05-20 | 0d |
| 36 | 1.1.2.3.3 | Gestionar cambios en el cronograma | 1d | 2013-05-20 | 2013-05-20 | 0d |
| 37 | 1.1.3 | **Riesgos** | 1d | 2013-05-20 | 2013-05-20 | 0d |
| 38 | 1.1.3.1 | **Planificación de la gestión de riesgos** | 1d | 2013-05-20 | 2013-05-20 | 0d |
| 39 | 1.1.3.1.1 | Definir metodologías | 1d | 2013-05-20 | 2013-05-20 | 0d |
| 40 | 1.1.3.1.2 | Definir roles y responsabilidades | 1d | 2013-05-20 | 2013-05-20 | 0d |
| 41 | 1.1.3.1.3 | Asignar recursos | 1d | 2013-05-20 | 2013-05-20 | 0d |
| 42 | 1.1.3.1.4 | Establecer frecuencia de supervisión y control | 1d | 2013-05-20 | 2013-05-20 | 0d |
| 43 | 1.1.3.2 | **Identificación y análisis de riesgos** | 1d | 2013-05-20 | 2013-05-20 | 0d |
| 44 | 1.1.3.2.1 | Listar riesgos del proyecto | 1d | 2013-05-20 | 2013-05-20 | 0d |
| 45 | 1.1.3.2.2 | Analizar probabilidad e impacto de los riesgos | 1d | 2013-05-20 | 2013-05-20 | 0d |
| 46 | 1.1.3.2.3 | Elaborar matriz de probabilidad e impacto | 1d | 2013-05-20 | 2013-05-20 | 0d |
| 47 | 1.1.3.3 | **Selección de riesgos y planes de respuesta** | 1d | 2013-05-20 | 2013-05-20 | 0d |
| 48 | 1.1.3.3.1 | Elegir criterio de selección | 1d | 2013-05-20 | 2013-05-20 | 0d |
| 49 | 1.1.3.3.2 | Seleccionar riesgos a contemplar | 1d | 2013-05-20 | 2013-05-20 | 0d |
| 50 | 1.1.3.3.3 | Definir estrategia de respuesta | 1d | 2013-05-20 | 2013-05-20 | 0d |
| 51 | 1.1.3.3.4 | Planificar estrategias | 1d | 2013-05-20 | 2013-05-20 | 0d |
| 52 | 1.1.3.3.5 | Documentar resultados | 1d | 2013-05-20 | 2013-05-20 | 0d |

| ID | WBS | Task | Duration | Start | Finish | Total slack |
| --- | --- | --- | --- | --- | --- | --- |
| 53 | 1.1.3.4 | **Supervisión y control** | 1d | 2013-05-20 | 2013-05-20 | 0d |
| 54 | 1.1.3.4.1 | Supervisar y reevaluar los riesgos | 1d | 2013-05-20 | 2013-05-20 | 0d |
| 55 | 1.1.3.4.2 | Identificar nuevos riesgos | 1d | 2013-05-20 | 2013-05-20 | 0d |
| 56 | 1.1.3.4.3 | Documentar cambios en el plan | 1d | 2013-05-20 | 2013-05-20 | 0d |
| 57 | 1.1.4 | **Gestión de recursos humanos** | 1d | 2013-05-20 | 2013-05-20 | 0d |
| 58 | 1.1.4.1 | **Planificación** | 1d | 2013-05-20 | 2013-05-20 | 0d |
| 59 | 1.1.4.1.1 | Definir roles y responsabilidades | 1d | 2013-05-20 | 2013-05-20 | 0d |
| 60 | 1.1.4.1.2 | Definir calendario de recursos | 1d | 2013-05-20 | 2013-05-20 | 0d |
| 61 | 1.1.4.1.3 | Elaborar plantillas de documentación | 1d | 2013-05-20 | 2013-05-20 | 0d |
| 62 | 1.1.4.2 | **Gestión de reuniones** | 1d | 2013-05-20 | 2013-05-20 | 0d |
| 63 | 1.1.4.2.1 | Definir cheklist de temas a tratar | 1d | 2013-05-20 | 2013-05-20 | 0d |
| 64 | 1.1.4.2.2 | Establecer lugar, fecha y hora | 1d | 2013-05-20 | 2013-05-20 | 0d |
| 65 | 1.1.4.2.3 | Concretar reunión | 1d | 2013-05-20 | 2013-05-20 | 0d |
| 66 | 1.1.4.2.4 | Completar minuta de reunión semanal | 1d | 2013-05-20 | 2013-05-20 | 0d |
| 67 | 1.2 | **Producto** | 1d | 2013-05-20 | 2013-05-20 | 0d |
| 68 | 1.2.1 | **Relevamiento** | 1d | 2013-05-20 | 2013-05-20 | 0d |
| 69 | 1.2.1.1 | **Diseñar instrumento de relevamiento** | 1d | 2013-05-20 | 2013-05-20 | 0d |
| 70 | 1.2.1.1.1 | Definir ámbito de relevamiento | 1d | 2013-05-20 | 2013-05-20 | 0d |
| 71 | 1.2.1.1.2 | Seleccionar la herramienta de relevamiento apropiada | 1d | 2013-05-20 | 2013-05-20 | 0d |
| 72 | 1.2.1.1.3 | Seleccionar el medio de relevamiento | 1d | 2013-05-20 | 2013-05-20 | 0d |
| 73 | 1.2.1.1.4 | Elaborar listado de preguntas tentativas | 1d | 2013-05-20 | 2013-05-20 | 0d |
| 74 | 1.2.1.1.5 | Seleccionar las preguntas a realizar | 1d | 2013-05-20 | 2013-05-20 | 0d |
| 75 | 1.2.1.1.6 | Diseñar y confeccionar la herramienta | 1d | 2013-05-20 | 2013-05-20 | 0d |
| 76 | 1.2.1.1.7 | Estimar cantidad de formularios y emitir los mismos | 1d | 2013-05-20 | 2013-05-20 | 0d |

| ID | WBS | Task | Duration | Start | Finish | Total slack |
| --- | --- | --- | --- | --- | --- | --- |
| 77 | 1.2.1.2 | **Relevar información** | 1d | 2013-05-20 | 2013-05-20 | 0d |
| 78 | 1.2.1.2.1 | Analizar el medio de relevamiento | 1d | 2013-05-20 | 2013-05-20 | 0d |
| 79 | 1.2.1.2.2 | Determinar fecha y hora de relevamiento. En caso de ser necesario, concertar cita con stakeholder | 1d | 2013-05-20 | 2013-05-20 | 0d |
| 80 | 1.2.1.2.3 | Preparar el relevamiento | 1d | 2013-05-20 | 2013-05-20 | 0d |
| 81 | 1.2.1.2.4 | Realizar relevamiento mediante la herramienta | 1d | 2013-05-20 | 2013-05-20 | 0d |
| 82 | 1.2.1.2.5 | Concluir el relevamiento realizado | 1d | 2013-05-20 | 2013-05-20 | 0d |
| 83 | 1.2.1.3 | **Analizar Información** | 1d | 2013-05-20 | 2013-05-20 | 0d |
| 84 | 1.2.1.3.1 | Organizar información recabada de acuerdo a criterios que simplifiquen su análisis | 1d | 2013-05-20 | 2013-05-20 | 0d |
| 85 | 1.2.1.3.2 | Analizar la información | 1d | 2013-05-20 | 2013-05-20 | 0d |
| 86 | 1.2.1.3.3 | Debatir grupalmente los resultados del análisis para comprender el funcionamiento de la organización | 1d | 2013-05-20 | 2013-05-20 | 0d |
| 87 | 1.2.1.3.4 | Elaborar conclusión de relevamiento destacando nuevos puntos a investigar | 1d | 2013-05-20 | 2013-05-20 | 0d |
| 88 | 1.2.1.4 | **Documentar el proceso de negocio** | 1d | 2013-05-20 | 2013-05-20 | 0d |
| 89 | 1.2.1.4.1 | Identificar y discutir grupalmente los diferentes procesos de negocio presentes en la organización | 1d | 2013-05-20 | 2013-05-20 | 0d |
| 90 | 1.2.1.4.2 | Seleccionar los procesos que serán afectados por el sistema de información | 1d | 2013-05-20 | 2013-05-20 | 0d |
| 91 | 1.2.1.4.3 | Confeccionar mapa global de los procesos de entorno | 1d | 2013-05-20 | 2013-05-20 | 0d |
| 92 | 1.2.1.4.4 | Describir los procesos identificados a los que da soporte el sistema de información | 1d | 2013-05-20 | 2013-05-20 | 0d |
| 93 | 1.2.1.4.5 | Identificar los problemas de los procesos actuales | 1d | 2013-05-20 | 2013-05-20 | 0d |
| 94 | 1.2.1.4.6 | Establecer puntos de mejora | 1d | 2013-05-20 | 2013-05-20 | 0d |
| 95 | 1.2.1.4.7 | Desarrollar una propuesta de mejora que contemple los problemas y los puntos de mejora identificados | 1d | 2013-05-20 | 2013-05-20 | 0d |
| 96 | 1.2.1.5 | **Aceptación del Cliente** | 1d | 2013-05-20 | 2013-05-20 | 0d |
| 97 | 1.2.1.5.1 | Enviar la documentación del proceso de negocio al cliente | 1d | 2013-05-20 | 2013-05-20 | 0d |
| 98 | 1.2.1.5.2 | Evaluar retroalementación del cliente | 1d | 2013-05-20 | 2013-05-20 | 0d |
| 99 | 1.2.1.5.3 | Actualizar documentación | 1d | 2013-05-20 | 2013-05-20 | 0d |
| 100 | 1.2.1.5.4 | Registrar aprobacion del cliente | 1d | 2013-05-20 | 2013-05-20 | 0d |

| ID | WBS | Task | Duration | Start | Finish | Total slack |
| --- | --- | --- | --- | --- | --- | --- |
| 101 | 1.2.2 | **Requerimiento** | 1d | 2013-05-20 | 2013-05-20 | 0d |
| 102 | 1.2.2.1 | **Especificar requerimientos del sistema** | 1d | 2013-05-20 | 2013-05-20 | 0d |
| 103 | 1.2.2.1.1 | Identificar requerimientos globales de la organización | 1d | 2013-05-20 | 2013-05-20 | 0d |
| 104 | 1.2.2.1.2 | Identificar requerimientos detallados de la organización | 1d | 2013-05-20 | 2013-05-20 | 0d |
| 105 | 1.2.2.1.3 | Realizar descripción de requerimientos funcionales | 1d | 2013-05-20 | 2013-05-20 | 0d |
| 106 | 1.2.2.1.4 | Realizar descripción de requerimientos no funcionales | 1d | 2013-05-20 | 2013-05-20 | 0d |
| 107 | 1.2.2.2 | **Estructurar modelo de casos de uso del sistema** | 1d | 2013-05-20 | 2013-05-20 | 0d |
| 108 | 1.2.2.2.1 | Identificar y describir actores | 1d | 2013-05-20 | 2013-05-20 | 0d |
| 109 | 1.2.2.2.2 | Identificar relaciones entre los actores | 1d | 2013-05-20 | 2013-05-20 | 0d |
| 110 | 1.2.2.2.3 | Identificar Casos de Uso del sistema | 1d | 2013-05-20 | 2013-05-20 | 0d |
| 111 | 1.2.2.2.4 | Describir objetivos de casos de uso del sistema | 1d | 2013-05-20 | 2013-05-20 | 0d |
| 112 | 1.2.2.2.5 | Describir trazo grueso de casos de uso del sistema | 1d | 2013-05-20 | 2013-05-20 | 0d |
| 113 | 1.2.2.2.6 | Describir trazo fino de CU esenciales del sistema | 1d | 2013-05-20 | 2013-05-20 | 0d |
| 114 | 1.2.2.2.7 | Identificar relaciones entre casos de uso | 1d | 2013-05-20 | 2013-05-20 | 0d |
| 115 | 1.2.2.2.8 | Construir diagramas de caso de uso del sistema | 1d | 2013-05-20 | 2013-05-20 | 0d |
| 116 | 1.2.2.2.9 | Confeccionar documento de especificación de requerimiento del software | 1d | 2013-05-20 | 2013-05-20 | 0d |
| 117 | 1.2.2.3 | **Realizar modelo de objetos del dominio del problema(MODP)** | 1d | 2013-05-20 | 2013-05-20 | 0d |
| 118 | 1.2.2.3.1 | Identificar clases del dominio | 1d | 2013-05-20 | 2013-05-20 | 0d |
| 119 | 1.2.2.3.2 | Identificar atributos y métodos de clase | 1d | 2013-05-20 | 2013-05-20 | 0d |
| 120 | 1.2.2.3.3 | Identificar relaciones entre clases | 1d | 2013-05-20 | 2013-05-20 | 0d |
| 121 | 1.2.2.3.4 | Confecionar el diagrama de clases | 1d | 2013-05-20 | 2013-05-20 | 0d |
| 122 | 1.2.2.4 | **Construir prototipo de interfaz** | 1d | 2013-05-20 | 2013-05-20 | 0d |
| 123 | 1.2.2.4.1 | Definir un templaate para la interfaz y prototipos de interfaz | 1d | 2013-05-20 | 2013-05-20 | 0d |
| 124 | 1.2.2.4.2 | Identificar los casos de uso del sistema que requieren prototipos de interfaz | 1d | 2013-05-20 | 2013-05-20 | 0d |
| 125 | 1.2.2.4.3 | Definir los datos necesarios para cada interfaz | 1d | 2013-05-20 | 2013-05-20 | 0d |
| 126 | 1.2.2.4.4 | Diseñar interfaces de cada caso de uso identificado | 1d | 2013-05-20 | 2013-05-20 | 0d |
| 127 | 1.2.2.4.5 | Definir y diseñar navegabilidad de las interfaces | 1d | 2013-05-20 | 2013-05-20 | 0d |
| 128 | 1.2.2.4.6 | Recorrer el flujo de trabajo de cada caso de uso mediante las interfaces | 1d | 2013-05-20 | 2013-05-20 | 0d |

| ID | WBS | Task | Duration | Start | Finish | Total slack |
| --- | --- | --- | --- | --- | --- | --- |
| 129 | 1.2.2.5 | **Validación del Cliente** | 1d | 2013-05-20 | 2013-05-20 | 0d |
| 130 | 1.2.2.5.1 | Organizar reunión con el cliente | 1d | 2013-05-20 | 2013-05-20 | 0d |
| 131 | 1.2.2.5.2 | Presentar casos de uso identificados y evaluar su validez | 1d | 2013-05-20 | 2013-05-20 | 0d |
| 132 | 1.2.2.5.3 | Validar CU esenciales recorriendo los diferentes escenarios mediante las interfaces gráficas | 1d | 2013-05-20 | 2013-05-20 | 0d |
| 133 | 1.2.2.5.4 | Registrar aportes y modificaciones hechas por el cliente | 1d | 2013-05-20 | 2013-05-20 | 0d |
| 134 | 1.2.3 | **Análisis** | 1d | 2013-05-20 | 2013-05-20 | 0d |
| 135 | 1.2.3.1 | **Realización de casos de uso esenciales** | 1d | 2013-05-20 | 2013-05-20 | 0d |
| 136 | 1.2.3.1.1 | Identificar clases de análisis participantes | 1d | 2013-05-20 | 2013-05-20 | 0d |
| 137 | 1.2.3.1.2 | Describir interacciones entre objetos de análisis | 1d | 2013-05-20 | 2013-05-20 | 0d |
| 138 | 1.2.3.1.3 | Documentar requisitos especiales | 1d | 2013-05-20 | 2013-05-20 | 0d |
| 139 | 1.2.3.1.4 | Estructurar diagrama de clases de analisis | 1d | 2013-05-20 | 2013-05-20 | 0d |
| 140 | 1.2.3.2 | **Estructurar artefactos de análisis en paquetes de análisis** | 1d | 2013-05-20 | 2013-05-20 | 0d |
| 141 | 1.2.3.2.1 | Identificar clases con alta cohesión | 1d | 2013-05-20 | 2013-05-20 | 0d |
| 142 | 1.2.3.2.2 | Estructurar las clases en paquetes de análisis | 1d | 2013-05-20 | 2013-05-20 | 0d |
| 143 | 1.2.3.2.3 | Identificar relaciones entre paquetes de análisis | 1d | 2013-05-20 | 2013-05-20 | 0d |
| 144 | 1.2.3.2.4 | Verificar los paquetes buscando alta cohesión entre sus componentes y bajo acoplamiento con otros paquetes | 1d | 2013-05-20 | 2013-05-20 | 0d |
| 145 | 1.2.4 | **Diseño** | 1d | 2013-05-20 | 2013-05-20 | 0d |
| 146 | 1.2.4.1 | **Diseñar la arquitectura** | 1d | 2013-05-20 | 2013-05-20 | 0d |
| 147 | 1.2.4.1.1 | Clasificar los Requisitos No Funcionales | 1d | 2013-05-20 | 2013-05-20 | 0d |
| 148 | 1.2.4.1.2 | Construir vista de despliegue de nodos | 1d | 2013-05-20 | 2013-05-20 | 0d |
| 149 | 1.2.4.1.3 | Construir vista de despliegue de hardware | 1d | 2013-05-20 | 2013-05-20 | 0d |
| 150 | 1.2.4.1.4 | Contruir vista de subsistemas e interfaces | 1d | 2013-05-20 | 2013-05-20 | 0d |
| 151 | 1.2.4.1.5 | Identificar Patrones de arquitectura a aplicar | 1d | 2013-05-20 | 2013-05-20 | 0d |
| 152 | 1.2.4.2 | **Realización de caso de uso - diseño (Solo los CU esenciales)** | 1d | 2013-05-20 | 2013-05-20 | 0d |
| 153 | 1.2.4.2.1 | Identificar clases de diseño participantes | 1d | 2013-05-20 | 2013-05-20 | 0d |
| 154 | 1.2.4.2.2 | Aplicar Patrones de Diseño | 1d | 2013-05-20 | 2013-05-20 | 0d |
| 155 | 1.2.4.2.3 | Describir interacciones entre objetos de diseño | 1d | 2013-05-20 | 2013-05-20 | 0d |
| 156 | 1.2.4.2.4 | Estructurar diagrama de clases de diseño | 1d | 2013-05-20 | 2013-05-20 | 0d |

| ID | WBS | Task | Duration | Start | Finish | Total slack |
| --- | --- | --- | --- | --- | --- | --- |
| 157 | 1.2.4.3 | **Realizar Diagrama de Transición de estados** | 1d | 2013-05-20 | 2013-05-20 | 0d |
| 158 | 1.2.4.3.1 | Identificar Clases con transición de estados | 1d | 2013-05-20 | 2013-05-20 | 0d |
| 159 | 1.2.4.3.2 | Identificar estados de las clases | 1d | 2013-05-20 | 2013-05-20 | 0d |
| 160 | 1.2.4.3.3 | Identificar transiciones | 1d | 2013-05-20 | 2013-05-20 | 0d |
| 161 | 1.2.4.3.4 | Realizar diagrama de transición de estados | 1d | 2013-05-20 | 2013-05-20 | 0d |
| 162 | 1.2.4.4 | **Estructurar subsistemas de diseño** | 1d | 2013-05-20 | 2013-05-20 | 0d |
| 163 | 1.2.4.4.1 | Identificar subsistemas | 1d | 2013-05-20 | 2013-05-20 | 0d |
| 164 | 1.2.4.4.2 | Identificar interfaces entre subsistemas | 1d | 2013-05-20 | 2013-05-20 | 0d |
| 165 | 1.2.4.4.3 | Establecer relaciones entre subsistemas | 1d | 2013-05-20 | 2013-05-20 | 0d |
| 166 | 1.2.4.4.4 | Realizar modelo de diseño | 1d | 2013-05-20 | 2013-05-20 | 0d |
| 167 | 1.2.4.5 | **Mapeo del Modelo de Objetos a BDR** | 1d | 2013-05-20 | 2013-05-20 | 0d |
| 168 | 1.2.4.5.1 | Configurar la herramienta ORM para generar el mapeo automaticamente. | 1d | 2013-05-20 | 2013-05-20 | 0d |
| 169 | 1.2.4.5.2 | Codificar las clases utilizando las herramientas brindas por hibernate. | 1d | 2013-05-20 | 2013-05-20 | 0d |
| 170 | 1.2.4.5.3 | Realizar la compilación del proyecto para generar la estructura de la BD a través de la herramienta | 1d | 2013-05-20 | 2013-05-20 | 0d |
| 171 | 1.2.4.5.4 | Generar DER | 1d | 2013-05-20 | 2013-05-20 | 0d |
| 172 | 1.2.5 | **Implementación** | 1d | 2013-05-20 | 2013-05-20 | 0d |
| 173 | 1.2.5.1 | **Implementar la arquitectura** | 1d | 2013-05-20 | 2013-05-20 | 0d |
| 174 | 1.2.5.1.1 | Identificar componentes relevantes para la arquitectura | 1d | 2013-05-20 | 2013-05-20 | 0d |
| 175 | 1.2.5.1.2 | Asignar componentes a nodos | 1d | 2013-05-20 | 2013-05-20 | 0d |
| 176 | 1.2.5.2 | **Integrar sistema** | 1d | 2013-05-20 | 2013-05-20 | 0d |
| 177 | 1.2.5.2.1 | Definir construcciones a integrar | 1d | 2013-05-20 | 2013-05-20 | 0d |
| 178 | 1.2.5.2.2 | Comprobar compatibilidad de construcciones | 1d | 2013-05-20 | 2013-05-20 | 0d |
| 179 | 1.2.5.2.3 | Crear plan de integración de construcción | 1d | 2013-05-20 | 2013-05-20 | 0d |
| 180 | 1.2.5.2.4 | Integrar construcciones de sistema | 1d | 2013-05-20 | 2013-05-20 | 0d |

| ID | WBS | Task | Duration | Start | Finish | Total slack |
| --- | --- | --- | --- | --- | --- | --- |
| 181 | 1.2.5.3 | **Implementar subsistema** | 1d | 2013-05-20 | 2013-05-20 | 0d |
| 182 | 1.2.5.3.1 | Definir objetivos y alcances del subsistema | 1d | 2013-05-20 | 2013-05-20 | 0d |
| 183 | 1.2.5.3.2 | Implementar subsistema en la construcción actual | 1d | 2013-05-20 | 2013-05-20 | 0d |
| 184 | 1.2.5.3.3 | Mantener los contenidos del subsistema | 1d | 2013-05-20 | 2013-05-20 | 0d |
| 185 | 1.2.5.4 | **Implementar clase** | 1d | 2013-05-20 | 2013-05-20 | 0d |
| 186 | 1.2.5.4.1 | Identificar clases de diseño a implementar | 1d | 2013-05-20 | 2013-05-20 | 0d |
| 187 | 1.2.5.4.2 | Generar código a partir de las clases de diseño | 1d | 2013-05-20 | 2013-05-20 | 0d |
| 188 | 1.2.5.4.3 | Implementar operaciones correspondientes en cada clase | 1d | 2013-05-20 | 2013-05-20 | 0d |
| 189 | 1.2.5.4.4 | Comprobar que las clases implementan las interfaces correspondientes | 1d | 2013-05-20 | 2013-05-20 | 0d |
| 190 | 1.2.5.5 | **Realizar pruebas de unidad** | 1d | 2013-05-20 | 2013-05-20 | 0d |
| 191 | 1.2.5.5.1 | Realizar plan de pruebas de unidad | 1d | 2013-05-20 | 2013-05-20 | 0d |
| 192 | 1.2.5.5.2 | Diseñar pruebas de caja negra, caja blanca y basadas en estados según corresponda | 1d | 2013-05-20 | 2013-05-20 | 0d |
| 193 | 1.2.5.5.3 | Realizar pruebas de unidad | 1d | 2013-05-20 | 2013-05-20 | 0d |
| 194 | 1.2.5.5.4 | Documentar resultados | 1d | 2013-05-20 | 2013-05-20 | 0d |
| 195 | 1.2.6 | **Prueba** | 1d | 2013-05-20 | 2013-05-20 | 0d |
| 196 | 1.2.6.1 | **Planificar pruebas** | 1d | 2013-05-20 | 2013-05-20 | 0d |
| 197 | 1.2.6.1.1 | Describir estrategia de prueba | 1d | 2013-05-20 | 2013-05-20 | 0d |
| 198 | 1.2.6.1.2 | Estimar los recursos para la prueba | 1d | 2013-05-20 | 2013-05-20 | 0d |
| 199 | 1.2.6.1.3 | Planificar el esfuerzo de la prueba | 1d | 2013-05-20 | 2013-05-20 | 0d |
| 200 | 1.2.6.2 | **Diseñar pruebas** | 1d | 2013-05-20 | 2013-05-20 | 0d |
| 201 | 1.2.6.2.1 | Identificar casos de prueba | 1d | 2013-05-20 | 2013-05-20 | 0d |
| 202 | 1.2.6.2.2 | Describir casos de prueba | 1d | 2013-05-20 | 2013-05-20 | 0d |
| 203 | 1.2.6.2.3 | Estructurar procedimiento de prueba | 1d | 2013-05-20 | 2013-05-20 | 0d |
| 204 | 1.2.6.3 | **Automatizar pruebas** | 1d | 2013-05-20 | 2013-05-20 | 0d |
| 205 | 1.2.6.3.1 | Identificar procedimientos de prueba automatizables | 1d | 2013-05-20 | 2013-05-20 | 0d |
| 206 | 1.2.6.3.2 | Crear componente de prueba | 1d | 2013-05-20 | 2013-05-20 | 0d |

| ID | WBS | Task | Duration | Start | Finish | Total slack |
| --- | --- | --- | --- | --- | --- | --- |
| 207 | 1.2.6.4 | **Realizar pruebas** | 1d | 2013-05-20 | 2013-05-20 | 0d |
| 208 | 1.2.6.4.1 | Realizar pruebas de integración | 1d | 2013-05-20 | 2013-05-20 | 0d |
| 209 | 1.2.6.4.2 | Realizar pruebas de sistema | 1d | 2013-05-20 | 2013-05-20 | 0d |
| 210 | 1.2.6.4.3 | Registrar resultados de pruebas | 1d | 2013-05-20 | 2013-05-20 | 0d |
| 211 | 1.2.6.5 | **Evaluar pruebas** | 1d | 2013-05-20 | 2013-05-20 | 0d |
| 212 | 1.2.6.5.1 | Evaluar esfuerzos de prueba | 1d | 2013-05-20 | 2013-05-20 | 0d |
| 213 | 1.2.6.5.2 | Comparar resultados con los objetivos establecidos en el plan de pruebas | 1d | 2013-05-20 | 2013-05-20 | 0d |
| 214 | 1.2.6.5.3 | Establecer métricas y fiabilidad del sistema | 1d | 2013-05-20 | 2013-05-20 | 0d |
| 215 | 1.2.7 | **Distribución del SW** | 1d | 2013-05-20 | 2013-05-20 | 0d |
| 216 | 1.2.7.1 | **Planificar la distribución** | 1d | 2013-05-20 | 2013-05-20 | 0d |
| 217 | 1.2.7.1.1 | Definir fecha de instalación del sistema | 1d | 2013-05-20 | 2013-05-20 | 0d |
| 218 | 1.2.7.1.2 | Definir lugar y fecha de capacitaciones | 1d | 2013-05-20 | 2013-05-20 | 0d |
| 219 | 1.2.7.1.3 | Definir recursos asignados a la distribución | 1d | 2013-05-20 | 2013-05-20 | 0d |
| 220 | 1.2.7.2 | **Producir unidad de distribución** | 1d | 2013-05-20 | 2013-05-20 | 0d |
| 221 | 1.2.7.2.1 | Definir forma de entrega del SW | 1d | 2013-05-20 | 2013-05-20 | 0d |
| 222 | 1.2.7.2.2 | Identificar los artefactos necesarios para instalar y usar el sistema | 1d | 2013-05-20 | 2013-05-20 | 0d |
| 223 | 1.2.7.2.3 | Empaquetar el producto | 1d | 2013-05-20 | 2013-05-20 | 0d |
| 224 | 1.2.7.3 | **Efectuar capacitaciones** | 1d | 2013-05-20 | 2013-05-20 | 0d |
| 225 | 1.2.7.3.1 | Confeccionar Material de Soporte | 1d | 2013-05-20 | 2013-05-20 | 0d |
| 226 | 1.2.7.3.2 | Organizar capacitaciones | 1d | 2013-05-20 | 2013-05-20 | 0d |
| 227 | 1.2.7.3.3 | Realizar las capacitaciones correspondientes | 1d | 2013-05-20 | 2013-05-20 | 0d |
| 228 | 1.2.7.3.4 | Evaluar la capacitacion | 1d | 2013-05-20 | 2013-05-20 | 0d |
| 229 | 1.2.8 | **Nivel de Esfuerzo** | 1d | 2013-05-20 | 2013-05-20 | 0d |
| 230 | 1.2.8.1 | **Organización de reuniones** | 1d | 2013-05-20 | 2013-05-20 | 0d |
| 231 | 1.2.8.1.1 | Establecer lugar, fecha y hora de reunión | 1d | 2013-05-20 | 2013-05-20 | 0d |
| 232 | 1.2.8.1.2 | Asistir a la reunión | 1d | 2013-05-20 | 2013-05-20 | 0d |
| 233 | 1.2.8.1.3 | Documentar temas tratados | 1d | 2013-05-20 | 2013-05-20 | 0d |

| ID | WBS | Task | Duration | Start | Finish | Total slack |
| --- | --- | --- | --- | --- | --- | --- |
| 234 | 1.2.8.2 | **Presentaciones** | 1d | 2013-05-20 | 2013-05-20 | 0d |
| 235 | 1.2.8.2.1 | Definir temas a presentar | 1d | 2013-05-20 | 2013-05-20 | 0d |
| 236 | 1.2.8.2.2 | Estructurar presentación | 1d | 2013-05-20 | 2013-05-20 | 0d |
| 237 | 1.2.8.2.3 | Llevar a cabo la presentación | 1d | 2013-05-20 | 2013-05-20 | 0d |
| 238 | 1.2.8.3 | **Investigaciones** | 1d | 2013-05-20 | 2013-05-20 | 0d |
| 239 | 1.2.8.3.1 | Definir temas a investigar | 1d | 2013-05-20 | 2013-05-20 | 0d |
| 240 | 1.2.8.3.2 | Buscar material relevante | 1d | 2013-05-20 | 2013-05-20 | 0d |
| 241 | 1.2.8.3.3 | Asimilar los conocimientos (teórica y prácticamente) | 1d | 2013-05-20 | 2013-05-20 | 0d |
